# G+1 Commercial Building Construction

Schedule from Primavera P6, 2026-10-05 to 2027-03-05, data date 2026-10-05, costs in INR, A marks actual dates.

## Calendars

- Construction 6-Day Calendar: Mon-Fri 08:00-16:00; Sat-Sun off.

## Resources

| Resource | Group | Rate |
| --- | --- | --- |
| Unskilled Labour | labor | 600 |
| Site Engineer | labor | 1500 |
| Excavator | equipment | 2500 |
| Skilled Labour | labor | 900 |
| Concrete Mixer | equipment | 1000 |
| Concrete Pump | equipment | 5000 |

## Schedule

| ID | WBS | Activity | Duration | Start | Finish | Predecessors | Complete | Remaining | Planned start | Planned finish | Total float | Resources | Cost | Actual cost |
| --- | --- | --- | --- | --- | --- | --- | --- | --- | --- | --- | --- | --- | --- | --- |
|  | 1 | **Pre-Construction** |  | 2026-10-05 | 2026-10-12 |  |  |  |  |  |  |  |  |  |
| A1000 |  | Site Mobilization | 2d | 2026-10-05 | 2026-10-06 |  |  |  |  |  | 0d | Unskilled Labour [16 h] | 9,600 |  |
| A1010 |  | Site Survey & Setting Out | 2d | 2026-10-07 | 2026-10-08 | A1000 |  |  |  |  | 0d | Site Engineer [16 h] | 24,000 |  |
| A1020 |  | Temporary Facilities | 2d | 2026-10-09 | 2026-10-12 | A1010 |  |  |  |  | 0d | Unskilled Labour [16 h] | 9,600 |  |
|  | 2 | **Earthwork** |  | 2026-10-13 | 2026-10-23 |  |  |  |  |  |  |  |  |  |
| A1030 |  | Site Clearing | 2d | 2026-10-13 | 2026-10-14 | A1020 |  |  |  |  | 0d | Unskilled Labour [16 h] | 9,600 |  |
| A1040 |  | Excavation for Foundations | 4d | 2026-10-15 | 2026-10-20 | A1030 |  |  |  |  | 0d | Excavator [32 h]; Unskilled Labour [32 h] | 99,200 |  |
| A1050 |  | Disposal of Excavated Soil | 2d | 2026-10-21 | 2026-10-22 | A1040 |  |  |  |  | 0d | Excavator [16 h]; Unskilled Labour [16 h] | 49,600 |  |
| A1060 |  | Excavation Inspection | 1d | 2026-10-23 | 2026-10-23 | A1050 |  |  |  |  | 0d | Site Engineer [8 h] | 12,000 |  |
|  | 3 | **Foundation** |  | 2026-10-26 | 2026-11-16 |  |  |  |  |  |  |  |  |  |
| A1070 |  | PCC for Footings | 2d | 2026-10-26 | 2026-10-27 | A1060 |  |  |  |  | 0d | Unskilled Labour [16 h]; Skilled Labour [16 h]; Concrete Mixer [16 h] | 40,000 |  |
| A1080 |  | Footing Reinforcement | 3d | 2026-10-28 | 2026-10-30 | A1070 |  |  |  |  | 0d | Site Engineer [24 h]; Unskilled Labour [24 h] | 50,400 |  |
| A1090 |  | Footing Formwork | 2d | 2026-11-02 | 2026-11-03 | A1080 |  |  |  |  | 0d | Skilled Labour [16 h]; Unskilled Labour [16 h] | 24,000 |  |
| A1100 |  | Footing Concreting | 2d | 2026-11-04 A | 2026-11-09 | A1090 FS+3d | 50% | 1d | 2026-11-04 | 2026-11-05 | 0d | Skilled Labour [16 h]; Unskilled Labour [16 h]; Concrete Pump [16 h] | 104,000 | 52,000 |
| A1110 |  | Column Starter Reinforcement | 2d | 2026-11-10 | 2026-11-11 | A1100 |  |  |  |  | 0d | Skilled Labour [16 h]; Unskilled Labour [16 h] | 24,000 |  |
| A1120 |  | Foundation Backfilling | 3d | 2026-11-12 | 2026-11-16 | A1110 |  |  |  |  | 0d | Unskilled Labour [24 h]; Excavator [24 h] | 74,400 |  |
|  | 4 | **Plinth** |  | 2026-11-17 | 2026-12-02 |  |  |  |  |  |  |  |  |  |
| A1130 |  | Plinth Beam Reinforcement | 3d | 2026-11-17 | 2026-11-19 | A1120 |  |  |  |  | 0d | Skilled Labour [24 h]; Unskilled Labour [24 h] | 36,000 |  |
| A1140 |  | Plinth Beam Formwork | 2d | 2026-11-20 | 2026-11-23 | A1130 |  |  |  |  | 0d | Skilled Labour [16 h]; Unskilled Labour [16 h] | 24,000 |  |
| A1150 |  | Pinth Beam Concreting | 2d | 2026-11-24 | 2026-11-25 | A1140 |  |  |  |  | 0d | Skilled Labour [16 h]; Unskilled Labour [16 h]; Concrete Pump [16 h] | 104,000 |  |
| A1160 |  | Ground Floor Filling | 3d | 2026-11-26 | 2026-11-30 | A1150 |  |  |  |  | 0d | Unskilled Labour [24 h]; Excavator [24 h] | 74,400 |  |
| A1170 |  | PCC for Groun Floor | 2d | 2026-12-01 | 2026-12-02 | A1160 |  |  |  |  | 0d | Skilled Labour [16 h]; Unskilled Labour [16 h]; Concrete Mixer [16 h] | 40,000 |  |
|  | 5 | **RCC Structure** |  | 2026-12-03 | 2027-01-07 |  |  |  |  |  |  |  |  |  |
| A1180 |  | Ground Floor Columns | 4d | 2026-12-03 | 2026-12-08 | A1170 |  |  |  |  | 0d | Skilled Labour [32 h]; Unskilled Labour [32 h] | 48,000 |  |
| A1220 |  | Staircase Construction | 4d | 2026-12-03 | 2026-12-08 | A1180 SS |  |  |  |  | 63d | Skilled Labour [32 h]; Unskilled Labour [32 h] | 48,000 |  |
| A1190 |  | Ground Floor Beam & Slab Formwork | 4d | 2026-12-09 | 2026-12-14 | A1180 |  |  |  |  | 0d | Skilled Labour [32 h]; Unskilled Labour [32 h] | 48,000 |  |
| A1200 |  | Ground Floor Beam & Slab Reinforcement | 4d | 2026-12-15 | 2026-12-18 | A1190 |  |  |  |  | 0d | Skilled Labour [32 h]; Unskilled Labour [32 h] | 48,000 |  |
| A1210 |  | Ground Floor Slab Concreting | 1d | 2026-12-21 | 2026-12-21 | A1200 |  |  |  |  | 0d | Skilled Labour [8 h]; Unskilled Labour [8 h]; Concrete Pump [8 h] | 52,000 |  |
| A1230 |  | First Floor Columns | 4d | 2026-12-22 | 2026-12-25 | A1210 |  |  |  |  | 0d | Skilled Labour [32 h]; Unskilled Labour [32 h] | 48,000 |  |
| A1240 |  | First Floor Beam & Slab Formwork | 4d | 2026-12-28 | 2026-12-31 | A1230 |  |  |  |  | 0d | Skilled Labour [32 h]; Unskilled Labour [32 h] | 48,000 |  |
| A1250 |  | First Floor Beam & Slab Reinforcement | 4d | 2027-01-01 | 2027-01-06 | A1240 |  |  |  |  | 0d | Skilled Labour [32 h]; Unskilled Labour [32 h] | 48,000 |  |
| A1260 |  | First Floor Slab Concreting | 1d | 2027-01-07 | 2027-01-07 | A1250 |  |  |  |  | 0d | Skilled Labour [8 h]; Unskilled Labour [8 h]; Concrete Pump [8 h] | 52,000 |  |

| ID | WBS | Activity | Duration | Start | Finish | Predecessors | Total float | Free float | Resources | Cost |
| --- | --- | --- | --- | --- | --- | --- | --- | --- | --- | --- |
|  | 6 | **Masonry** |  | 2026-12-22 | 2027-01-14 |  |  |  |  |  |
| A1270 |  | Ground Floor Block Masonry | 5d | 2026-12-22 | 2026-12-28 | A1210 | 15d | 0d | Skilled Labour [40 h]; Unskilled Labour [40 h] | 60,000 |
| A1290 |  | Internal Partition Walls | 4d | 2026-12-29 | 2027-01-01 | A1270 | 45d |  | Skilled Labour [32 h]; Unskilled Labour [32 h] | 48,000 |
| A1280 |  | First Floor Block Masonry | 5d | 2027-01-08 | 2027-01-14 | A1260 | 0d |  | Skilled Labour [40 h]; Unskilled Labour [40 h] | 60,000 |
|  | 7 | **Finishing** |  | 2026-12-29 | 2027-01-21 |  |  |  |  |  |
| A1300 |  | Internal Plastering | 5d | 2026-12-29 | 2027-01-04 | A1270 | 15d | 0d | Skilled Labour [40 h]; Unskilled Labour [40 h] | 60,000 |
| A1320 |  | Flooring | 4d | 2027-01-05 | 2027-01-08 | A1300 | 35d | 0d | Skilled Labour [32 h]; Unskilled Labour [32 h] | 48,000 |
| A1330 |  | Doors & Windows | 3d | 2027-01-05 | 2027-01-07 | A1300 | 36d | 1d | Skilled Labour [24 h]; Unskilled Labour [24 h] | 36,000 |
| A1340 |  | Putty & Painting | 5d | 2027-01-11 | 2027-01-15 | A1320, A1330 | 35d |  | Skilled Labour [40 h]; Unskilled Labour [40 h] | 60,000 |
| A1310 |  | External Plastering | 5d | 2027-01-15 | 2027-01-21 | A1280 | 0d |  | Skilled Labour [40 h]; Unskilled Labour [40 h] | 60,000 |
|  | 8 | **MEP Works** |  | 2027-01-05 | 2027-01-15 |  |  |  |  |  |
| A1350 |  | Electrical Conduit Installation | 4d | 2027-01-05 | 2027-01-08 | A1300 | 15d | 0d | Skilled Labour [32 h] | 28,800 |
| A1360 |  | Plumbing Installation | 4d | 2027-01-05 | 2027-01-08 | A1300 | 38d | 0d | Skilled Labour [32 h] | 28,800 |
| A1370 |  | Electrical Wiring | 3d | 2027-01-11 | 2027-01-13 | A1350 | 15d | 0d | Skilled Labour [24 h] | 21,600 |
| A1380 |  | Plumbing Fixtures | 2d | 2027-01-11 | 2027-01-12 | A1360 | 38d |  | Skilled Labour [16 h] | 14,400 |
| A1390 |  | Electrical Fixtures | 2d | 2027-01-14 | 2027-01-15 | A1370 | 15d |  | Skilled Labour [16 h] | 14,400 |
|  | 9 | **External Works** |  | 2027-01-22 | 2027-02-05 |  |  |  |  |  |
| A1400 |  | External Drainage | 3d | 2027-01-22 | 2027-01-26 | A1310 | 0d |  | Skilled Labour [24 h]; Unskilled Labour [24 h] | 36,000 |
| A1410 |  | Approach Road | 3d | 2027-01-27 | 2027-01-29 | A1400 | 0d |  | Unskilled Labour [24 h]; Excavator [24 h] | 74,400 |
| A1420 |  | Landscaping | 3d | 2027-02-01 | 2027-02-03 | A1410 | 0d |  | Unskilled Labour [24 h] | 14,400 |
| A1430 |  | Site Cleaning | 2d | 2027-02-04 | 2027-02-05 | A1420 | 0d |  | Unskilled Labour [16 h] | 9,600 |
|  | 10 | **Handover** |  | 2027-02-08 | 2027-03-05 |  |  |  |  |  |
| A1440 |  | Testing & Inspection | 5d | 2027-02-08 | 2027-02-12 | A1390, A1430 | 0d |  | Site Engineer [40 h] | 60,000 |
| A1450 |  | Snag Rectification | 5d | 2027-02-15 | 2027-02-19 | A1440 | 0d |  | Skilled Labour [40 h]; Unskilled Labour [40 h] | 60,000 |
| A1460 |  | Final Inspection | 5d | 2027-02-22 | 2027-02-26 | A1450 | 0d |  | Site Engineer [40 h] | 60,000 |
| A1470 |  | Project Handover | 5d | 2027-03-01 | 2027-03-05 | A1460 | 0d |  | Site Engineer [40 h] | 60,000 |
